# 010101010010101001010101001010100101

Schedule from MS Project MPX, 2018-07-16 to 2019-07-10, A marks actual dates.

## Calendars

- Estándar: Mon-Fri 09:00 am-01:00 pm, 03:00 pm-07:00 pm; Sat-Sun off.
- : Mon-Sun off.
- : Mon-Sun off.
- : Mon-Sun off.
- : Mon-Sun off.
- : Mon-Sun off.
- : Mon-Sun off.
- : Mon-Sun off.
- : Mon-Sun off.
- : Mon-Sun off.
- : Mon-Sun off.
- : Mon-Sun off.
- : Mon-Sun off.
- : Mon-Sun off.
- : Mon-Sun off.
- : Mon-Sun off.
- : Mon-Sun off.

## Resources

| Resource |
| --- |
| Administrador de Contrato - Cliente |
| Líder Técnico - Cliente |
| Líder Funcional - Usuario Experto - Cliente |
| Funcionarios Técnicos - Cliente |
| Usuarios Finales - Cliente |
| Desarrollador PlanERP |
| Gerente de Proyecto PlanERP |
| Líder del Proyecto/Desarrollo PlanERP |
| Analista Procesos PlanERP |
| Analista de Calidad PlanERP |
| Especialista Base de Datos PlanERP |
| Consultor Especialista en Procesos de GADs PlanERP |

## Schedule

| ID | WBS | Task | Start | Finish | Predecessors |
| --- | --- | --- | --- | --- | --- |
| 1 | 0 | 20190122- Plan del Proyecto de Implementacion del SIIM Daule | 2018-07-16 A | 2019-07-10 A |  |
| 2 | 0 | Programa de Implementación SIIM | 2018-07-16 A | 2019-07-10 A |  |
| 3 | 0 | FASE 1: Implementación de Módulos de Servicio al Cliente (SC) y Atención al Ciudadano (AC) | 2018-07-16 A | 2019-01-25 A |  |
| 4 | 0 | ETAPA 1: Preparación del Proyecto e Instalación del SIIM - Módulos SC y AC | 2018-07-16 A | 2018-07-25 A |  |
| 5 | 0 | Actividades de Gestión del Proyecto | 2018-07-16 A | 2018-07-18 A |  |
| 6 | 0 | Revisión de Información de Contrato y Anexos | 2018-07-16 A | 2018-07-16 A |  |
| 7 | 0 | Definir la Organización del Proyecto | 2018-07-16 A | 2018-07-17 A | 6FF |
| 8 | 0 | Kick-off Interno del Proyecto | 2018-07-17 A | 2018-07-18 A | 7FF |
| 9 | 0 | Preparación del kick-off del Proyecto | 2018-07-18 A | 2018-07-19 A |  |
| 10 | 0 | Comunicación con el Cliente | 2018-07-18 A | 2018-07-18 A | 8FF |
| 11 | 0 | Crear la presentación del kick-off | 2018-07-18 A | 2018-07-19 A | 10FF |
| 12 | 0 | Reunión de Kick-off | 2018-07-19 A | 2018-07-19 A |  |
| 13 | 0 | Realizar la reunión de kick-off | 2018-07-19 A | 2018-07-19 A | 11FF |
| 14 | 0 | Entrega e Instalación del Software | 2018-07-19 A | 2018-07-25 A |  |
| 15 | 0 | Instalar SIIM en Servidor | 2018-07-19 A | 2018-07-24 A | 12FF |
| 16 | 0 | 1 Dirección de Desarrollo Territorial (No incluye Catastro) | 2018-07-19 A | 2018-07-19 A |  |
| 17 | 0 | 4 Dirección de Justicia y Vigilancia | 2018-07-19 A | 2018-07-19 A | 16FF |
| 18 | 0 | 5 Dirección de Desarrollo Humano y Social | 2018-07-19 A | 2018-07-20 A | 17FF |
| 19 | 0 | 8.3 Rentas | 2018-07-20 A | 2018-07-20 A | 18FF |
| 20 | 0 | 8.4 Tesorería | 2018-07-20 A | 2018-07-20 A | 19FF |
| 21 | 0 | 9.1 Mercados | 2018-07-20 A | 2018-07-20 A | 20FF |
| 22 | 0 | 9.2 Cementerio | 2018-07-20 A | 2018-07-20 A | 21FF |
| 23 | 0 | 9.3 Camal | 2018-07-20 A | 2018-07-20 A | 22FF |
| 24 | 0 | 10 Registro de la Propiedad y Mercantil | 2018-07-20 A | 2018-07-23 A | 23FF |
| 25 | 0 | 11 Administración de bomberos | 2018-07-23 A | 2018-07-23 A | 24FF |
| 26 | 0 | 12 CRM para ciudadanos. Ventanilla Única | 2018-07-23 A | 2018-07-23 A | 25FF |
| 27 | 0 | 15.1 BI Desarrollo Territorial | 2018-07-23 A | 2018-07-23 A | 26FF |
| 28 | 0 | 15.5 BI Obras Públicas Municipales | 2018-07-23 A | 2018-07-24 A | 27FF |
| 29 | 0 | 15.7 BI Registro de la Propiedad y Mercantil | 2018-07-24 A | 2018-07-24 A | 28FF |
| 30 | 0 | 16.1 Consultas Portal Web | 2018-07-24 A | 2018-07-24 A | 29FF |
| 31 | 0 | 16.2 Aplicación para móviles (APP) | 2018-07-24 A | 2018-07-24 A | 30FF |
| 32 | 0 | Entrega de Software | 2018-07-24 A | 2018-07-25 A | 15FF |
| 33 | 0 | Revisar la ETAPA del Proyecto | 2018-07-25 A | 2018-07-25 A | 14FF |
| 34 | 0 | HITO: FINALIZACION ETAPA 1 | 2018-07-25 A | 2018-07-25 A | 33FF |
| 35 | 0 | ETAPA 2: Levantamiento de Características Institucionales - Módulos SC y AC | 2018-07-25 A | 2018-08-13 A | 4FF |
| 36 | 0 | Actividades de Gestión del Proyecto | 2018-07-25 A | 2018-07-26 A |  |
| 37 | 0 | Revisión del Plan del Proyecto | 2018-07-25 A | 2018-07-26 A | 33FF |
| 38 | 0 | Programar talleres de requerimientos de Entidad | 2018-07-26 A | 2018-07-26 A | 37FF |
| 39 | 0 | Sesiones de Requerimientos del Entidad | 2018-07-26 A | 2018-08-10 A |  |
| 40 | 0 | Conducir Sesiones de Requerimientos | 2018-07-26 A | 2018-08-08 A | 38FF |
| 41 | 0 | Crear Documento de Características del Entidad | 2018-08-08 A | 2018-08-10 A | 40FF |
| 42 | 0 | Revisar el Documento de Características del Entidad | 2018-08-10 A | 2018-08-10 A |  |
| 43 | 0 | Revisar el Documento de Características del Entidad | 2018-08-10 A | 2018-08-10 A | 41FF |
| 44 | 0 | Revisar el Plan del Proyecto | 2018-08-10 A | 2018-08-10 A | 43FF |
| 45 | 0 | Revisar la ETAPA del Proyecto | 2018-08-10 A | 2018-08-13 A | 42FF |
| 46 | 0 | HITO: FINALIZACION ETAPA 2 | 2018-08-13 A | 2018-08-13 A | 45FF |
| 47 | 0 | ETAPA 3: Migración de Datos, Configuración y Pruebas de Operación - Módulos SC y AC | 2018-08-13 A | 2018-10-22 A | 35FF |
| 48 | 0 | Gestión General del Proyecto | 2018-08-13 A | 2018-08-14 A |  |
| 49 | 0 | Planificar cambio Organizacional | 2018-08-13 A | 2018-08-14 A | 45FF |
| 50 | 0 | Planificar Entrenamiento a Usuarios Finales | 2018-08-14 A | 2018-08-14 A | 49FF |
| 51 | 0 | Definir y Preparar la Migración de Datos | 2018-08-14 A | 2018-08-14 A | 49FF |
| 52 | 0 | Configuración del Sistema en Producción | 2018-08-14 A | 2018-10-22 A |  |
| 53 | 0 | Instalar el SIIM en Producción | 2018-08-14 A | 2018-08-15 A | 51FF |
| 54 | 0 | Configurar Inicialización del Sistema | 2018-08-15 A | 2018-08-16 A | 53FF |
| 55 | 0 | Realizar la Migración de Datos | 2018-08-16 A | 2018-10-22 A | 54FF |
| 56 | 0 | Desarrollar Adaptaciones al Software | 2018-08-16 A | 2018-08-28 A | 54FF |
| 57 | 0 | Configuración del Sistema en base al Documento de Características del Entidad | 2018-08-28 A | 2018-08-31 A | 56FF |
| 58 | 0 | Configurar Interfaces | 2018-08-31 A | 2018-09-03 A | 57FF |
| 59 | 0 | Configurar Usuarios y Autorizaciones | 2018-09-03 A | 2018-09-04 A | 58FF |
| 60 | 0 | Gestión del Cambio Organizacional | 2018-09-04 A | 2018-09-05 A |  |
| 61 | 0 | Conducir la comunicación de la Gestión de Cambios (si es aplicable) | 2018-09-04 A | 2018-09-05 A | 59FF |
| 62 | 0 | Pruebas de validación/aceptación del Sistema | 2018-09-05 A | 2018-09-10 A |  |
| 63 | 0 | Mantener la Lista Maestra de Procesos de Entidad | 2018-09-05 A | 2018-09-05 A | 61FF |
| 64 | 0 | Conducir Talleres de Validación | 2018-09-05 A | 2018-09-10 A | 63FF |
| 65 | 0 | 1 Dirección de Desarrollo Territorial (No incluye Catastro) | 2018-09-05 A | 2018-09-05 A |  |
| 66 | 0 | 4 Dirección de Justicia y Vigilancia | 2018-09-05 A | 2018-09-05 A | 65FF |
| 67 | 0 | 5 Dirección de Desarrollo Humano y Social | 2018-09-05 A | 2018-09-05 A | 66FF |
| 68 | 0 | 8.3 Rentas | 2018-09-05 A | 2018-09-06 A | 67FF |
| 69 | 0 | 8.4 Tesorería | 2018-09-06 A | 2018-09-06 A | 68FF |
| 70 | 0 | 9.1 Mercados | 2018-09-06 A | 2018-09-06 A | 69FF |

| ID | WBS | Task | Start | Finish | Predecessors |
| --- | --- | --- | --- | --- | --- |
| 71 | 0 | 9.2 Cementerio | 2018-09-06 A | 2018-09-06 A | 70FF |
| 72 | 0 | 9.3 Camal | 2018-09-06 A | 2018-09-06 A | 71FF |
| 73 | 0 | 10 Registro de la Propiedad y Mercantil | 2018-09-06 A | 2018-09-07 A | 72FF |
| 74 | 0 | 11 Administración de bomberos | 2018-09-07 A | 2018-09-07 A | 73FF |
| 75 | 0 | 12 CRM para ciudadanos. Ventanilla Única | 2018-09-07 A | 2018-09-07 A | 74FF |
| 76 | 0 | 15.1 BI Desarrollo Territorial | 2018-09-07 A | 2018-09-07 A | 75FF |
| 77 | 0 | 15.5 BI Obras Públicas Municipales | 2018-09-07 A | 2018-09-07 A | 76FF |
| 78 | 0 | 15.7 BI Registro de la Propiedad y Mercantil | 2018-09-07 A | 2018-09-07 A | 77FF |
| 79 | 0 | 16.1 Consultas Portal Web | 2018-09-07 A | 2018-09-07 A | 78FF |
| 80 | 0 | 16.2 Aplicación para móviles (APP) | 2018-09-07 A | 2018-09-10 A | 79FF |
| 81 | 0 | Pruebas de Aceptacion Sistema | 2018-09-10 A | 2018-09-14 A |  |
| 82 | 0 | Definir casos de prueba y alcance | 2018-09-10 A | 2018-09-10 A | 80FF, 31FF |
| 83 | 0 | Preparar ambiente de pruebas | 2018-09-10 A | 2018-09-11 A | 82FF |
| 84 | 0 | Ejecutar el plan de pruebas de Aceptacion del Sistema | 2018-09-11 A | 2018-09-13 A | 83FF |
| 85 | 0 | 1 Dirección de Desarrollo Territorial (No incluye Catastro) | 2018-09-11 A | 2018-09-11 A |  |
| 86 | 0 | 4 Dirección de Justicia y Vigilancia | 2018-09-11 A | 2018-09-11 A | 85FF |
| 87 | 0 | 5 Dirección de Desarrollo Humano y Social | 2018-09-11 A | 2018-09-11 A | 86FF |
| 88 | 0 | 8.3 Rentas | 2018-09-11 A | 2018-09-12 A | 87FF |
| 89 | 0 | 8.4 Tesorería | 2018-09-12 A | 2018-09-12 A | 88FF |
| 90 | 0 | 9.1 Mercados | 2018-09-12 A | 2018-09-12 A | 89FF |
| 91 | 0 | 9.2 Cementerio | 2018-09-12 A | 2018-09-12 A | 90FF |
| 92 | 0 | 9.3 Camal | 2018-09-12 A | 2018-09-12 A | 91FF |
| 93 | 0 | 10 Registro de la Propiedad y Mercantil | 2018-09-12 A | 2018-09-12 A | 92FF |
| 94 | 0 | 11 Administración de bomberos | 2018-09-12 A | 2018-09-13 A | 93FF |
| 95 | 0 | 12 CRM para ciudadanos. Ventanilla Única | 2018-09-13 A | 2018-09-13 A | 94FF |
| 96 | 0 | 15.1 BI Desarrollo Territorial | 2018-09-13 A | 2018-09-13 A | 95FF |
| 97 | 0 | 15.5 BI Obras Públicas Municipales | 2018-09-13 A | 2018-09-13 A | 96FF |
| 98 | 0 | 15.7 BI Registro de la Propiedad y Mercantil | 2018-09-13 A | 2018-09-13 A | 97FF |
| 99 | 0 | 16.1 Consultas Portal Web | 2018-09-13 A | 2018-09-13 A | 98FF |
| 100 | 0 | 16.2 Aplicación para móviles (APP) | 2018-09-13 A | 2018-09-13 A | 99FF |
| 101 | 0 | Revisar los resultados de las pruebas y necesidades de cambios | 2018-09-13 A | 2018-09-14 A | 100FF, 80FF, 31FF |
| 102 | 0 | Planificar Salida a Producción y Soporte | 2018-09-14 A | 2018-09-17 A |  |
| 103 | 0 | Definir Plan de Salida a Producción | 2018-09-14 A | 2018-09-17 A | 101FF |
| 104 | 0 | Planificar Estrategia de Soporte | 2018-09-14 A | 2018-09-17 A | 101FF |
| 105 | 0 | Planificar Administración del Sistema | 2018-09-14 A | 2018-09-17 A | 101FF |
| 106 | 0 | Revisar la ETAPA del Proyecto | 2018-09-17 A | 2018-09-17 A | 102FF |
| 107 | 0 | HITO: FINALIZACION ETAPA 3 | 2018-09-17 A | 2018-09-17 A | 106FF |
| 108 | 0 | ETAPA 4: Preparación Final previo Despliegue en Producción - Módulos SC y AC | 2018-09-17 A | 2018-10-11 A |  |
| 109 | 0 | Gestión General del Proyecto | 2018-09-17 A | 2018-09-18 A |  |
| 110 | 0 | Confirmar el Plan de Entrenamiento | 2018-09-17 A | 2018-09-18 A | 106FF |
| 111 | 0 | Finalizar plan de Salida a Producción | 2018-09-18 A | 2018-09-18 A | 110FF |
| 112 | 0 | Entrenamiento en Modulos de Areas Funcionales Fase 1 | 2018-09-18 A | 2018-10-08 A | 109FF |
| 113 | 0 | Entrenamiento de Usuarios Funcionales y Certificación de Procesos | 2018-09-18 A | 2018-10-02 A | 111FF |
| 114 | 0 | 1 Dirección de Desarrollo Territorial (No incluye Catastro) | 2018-09-18 A | 2018-09-19 A |  |
| 115 | 0 | 4 Dirección de Justicia y Vigilancia | 2018-09-19 A | 2018-09-20 A | 114FF |
| 116 | 0 | 5 Dirección de Desarrollo Humano y Social | 2018-09-20 A | 2018-09-21 A | 115FF |
| 117 | 0 | 8.3 Rentas | 2018-09-21 A | 2018-09-21 A | 116FF |
| 118 | 0 | 8.4 Tesorería | 2018-09-21 A | 2018-09-24 A | 117FF |
| 119 | 0 | 9.1 Mercados | 2018-09-24 A | 2018-09-25 A | 118FF |
| 120 | 0 | 9.2 Cementerio | 2018-09-25 A | 2018-09-25 A | 119FF |
| 121 | 0 | 9.3 Camal | 2018-09-25 A | 2018-09-26 A | 120FF |
| 122 | 0 | 10 Registro de la Propiedad y Mercantil | 2018-09-26 A | 2018-09-26 A | 121FF |
| 123 | 0 | 11 Administración de bomberos | 2018-09-27 A | 2018-09-27 A | 122FF |
| 124 | 0 | 12 CRM para ciudadanos. Ventanilla Única | 2018-09-27 A | 2018-09-28 A | 123FF |
| 125 | 0 | 15.1 BI Desarrollo Territorial | 2018-09-28 A | 2018-09-28 A | 124FF |
| 126 | 0 | 15.5 BI Obras Públicas Municipales | 2018-09-28 A | 2018-10-01 A | 125FF |
| 127 | 0 | 15.7 BI Registro de la Propiedad y Mercantil | 2018-10-01 A | 2018-10-01 A | 126FF |
| 128 | 0 | 16.1 Consultas Portal Web | 2018-10-01 A | 2018-10-02 A | 127FF |
| 129 | 0 | 16.2 Aplicación para móviles (APP) | 2018-10-02 A | 2018-10-02 A | 128FF |
| 130 | 0 | Entrenamiento de Usuario Técnicos | 2018-10-02 A | 2018-10-08 A | 129FF, 100FF, 80FF, 31FF |
| 131 | 0 | Preparación del Sistema | 2018-10-08 A | 2018-10-09 A | 112FF |
| 132 | 0 | Completar la Administración del Sistema | 2018-10-08 A | 2018-10-08 A |  |
| 133 | 0 | Comprobación de la Puesta a Producción | 2018-10-08 A | 2018-10-09 A | 132FF |
| 134 | 0 | Transición | 2018-10-09 A | 2018-10-11 A | 131FF |
| 135 | 0 | Finalizar Procesamiento de Sistemas Legados | 2018-10-09 A | 2018-10-09 A |  |
| 136 | 0 | Realizar la Salida a Producción - Carga Inicial y Configuración Inicial | 2018-10-09 A | 2018-10-11 A | 135FF |
| 137 | 0 | Revisar la ETAPA del Proyecto | 2018-10-11 A | 2018-10-11 A | 134FF |
| 138 | 0 | HITO: FINALIZACION ETAPA 4 | 2018-10-11 A | 2018-10-11 A | 137FF |
| 139 | 0 | ETAPA 5: Despliegue en Producción y Soporte Técnico - Módulos SC y AC | 2018-10-11 A | 2018-11-16 A | 108FF |
| 140 | 0 | Soporte en Producción | 2018-10-11 A | 2018-11-16 A |  |

| ID | WBS | Task | Start | Finish | Predecessors |
| --- | --- | --- | --- | --- | --- |
| 141 | 0 | Soporte durante la Salida a Producción | 2018-10-11 A | 2018-11-16 A | 137FF |
| 142 | 0 | Resolver incidentes críticos | 2018-10-11 A | 2018-11-05 A | 137FF |
| 143 | 0 | Entregar el soporte y Administración al cliente | 2018-10-11 A | 2018-10-12 A |  |
| 144 | 0 | Mejora Continua | 2018-10-11 A | 2018-10-24 A |  |
| 145 | 0 | Monitoreo del Sistema y Acompañamiento ETAPA1 | 2018-10-11 A | 2018-10-24 A | 137FF |
| 146 | 0 | Ajustes y Configuraciones finales al Software acorde a necesidades Entidad | 2018-10-11 A | 2018-10-24 A | 137FF |
| 147 | 0 | Cierre de la ETAPA 5 | 2018-10-24 A | 2018-10-24 A |  |
| 148 | 0 | Reunión de Cierre de la ETAPA 5 | 2018-10-24 A | 2018-10-24 A | 144FF |
| 149 | 0 | HITO: FIN DE LA ETAPA 5 | 2018-10-24 A | 2018-10-24 A | 148FF |
| 150 | 0 | ETAPA 6: Estabilización, Apoyo Emisión 2019 y Desarrollo de funcionalidades no establecidas en el Alcance Contractual | 2018-11-16 A | 2019-01-25 A |  |
| 151 | 0 | Depuración de Errores de Calidad de Información fuente migrada (Base Oracle) | 2018-11-16 A | 2018-12-24 A | 139FF |
| 152 | 0 | Soporte y Mantenimiento de Módulos de la Fase 1 | 2018-11-16 A | 2018-12-24 A | 139FF |
| 153 | 0 | Adaptaciones a Software para incluir Nuevas funcionalidades no contempladas en alcance proyecto | 2018-11-16 A | 2018-12-24 A | 139FF |
| 154 | 0 | Implementación de Licencia temporal de Modulo de Catastro Urbano SIIM | 2018-12-03 A | 2018-12-26 A |  |
| 155 | 0 | Migración de información de Emisión de Impuestos de Catastro Urbano 2019 | 2018-12-03 A | 2018-12-26 A |  |
| 156 | 0 | Creación de interfaces mediante ETLs para integración entre Sistema Oracle y SIIM para la recaudación de Impuestos 2019 de Catastro Urbano | 2018-12-03 A | 2018-12-26 A |  |
| 157 | 0 | Soporte en Recaudación de Impuestos de Catastro urbano y mejoras 2019 | 2018-12-26 A | 2019-01-25 A | 156FF |
| 158 | 0 | Cierre de la FASE 1 | 2019-01-25 A | 2019-01-25 A |  |
| 159 | 0 | Reunión de Cierre de la FASE 1 | 2019-01-25 A | 2019-01-25 A | 157FF |
| 160 | 0 | HITO: FIN DE LA FASE 1 | 2019-01-25 A | 2019-01-25 A | 159FF |
| 161 | 0 | FASE 2: Implementación de Módulos de Planificación de Recursos Institucionales - PRI | 2019-01-25 A | 2019-05-14 A |  |
| 162 | 0 | ETAPA 1: Instalación del SIIM - Módulos PRI | 2019-01-25 A | 2019-01-31 A |  |
| 163 | 0 | Entrega e Instalación del Software | 2019-01-25 A | 2019-01-30 A |  |
| 164 | 0 | Instalar SIIM en Servidor | 2019-01-25 A | 2019-01-30 A |  |
| 165 | 0 | Instalar Módulos PRI | 2019-01-25 A | 2019-01-30 A | 150FF |
| 166 | 0 | 2.1 Administración Técnica | 2019-01-25 A | 2019-01-25 A |  |
| 167 | 0 | 2.2 Salud Ocupacional y Riesgos | 2019-01-25 A | 2019-01-28 A | 166FF |
| 168 | 0 | 3.2 Adquisiciones | 2019-01-28 A | 2019-01-28 A | 167FF |
| 169 | 0 | 6.1 Administración de Bienes | 2019-01-28 A | 2019-01-28 A | 168FF |
| 170 | 0 | 8.1 Contabilidad | 2019-01-28 A | 2019-01-28 A | 169FF |
| 171 | 0 | 8.2 Presupuestos | 2019-01-28 A | 2019-01-29 A | 170FF |
| 172 | 0 | 13 CRM para Urbanizaciones | 2019-01-29 A | 2019-01-29 A | 171FF |
| 173 | 0 | 14 Dirección de Planificación Institucional (Incluye control de proyectos de Obras Públicas | 2019-01-29 A | 2019-01-29 A | 172FF |
| 174 | 0 | 15.6 Servicios Corporativos | 2019-01-29 A | 2019-01-29 A | 173FF |
| 175 | 0 | 15.8 BI Planificación Institucional | 2019-01-29 A | 2019-01-30 A | 174FF |
| 176 | 0 | Entrega de Software | 2019-01-30 A | 2019-01-30 A | 164FF |
| 177 | 0 | Revisar la ETAPA del Proyecto | 2019-01-30 A | 2019-01-31 A | 163FF |
| 178 | 0 | HITO: FINALIZACION ETAPA 1 | 2019-01-31 A | 2019-01-31 A | 177FF |
| 179 | 0 | ETAPA 2: Levantamiento de Características Institucionales - Módulos PRI | 2019-01-31 A | 2019-02-11 A | 162FF |
| 180 | 0 | Actividades de Gestión del Proyecto | 2019-01-31 A | 2019-01-31 A |  |
| 181 | 0 | Revisión del Plan del Proyecto | 2019-01-31 A | 2019-01-31 A |  |
| 182 | 0 | Programar talleres de requerimientos de Entidad | 2019-01-31 A | 2019-01-31 A | 181FF |
| 183 | 0 | Sesiones de Requerimientos del Entidad | 2019-01-31 A | 2019-02-08 A | 180FF |
| 184 | 0 | Conducir Sesiones de Requerimientos | 2019-01-31 A | 2019-02-07 A |  |
| 185 | 0 | Crear Documento de Características del Entidad | 2019-02-07 A | 2019-02-08 A | 184FF |
| 186 | 0 | Revisar el Documento de Características del Entidad | 2019-02-08 A | 2019-02-08 A | 183FF |
| 187 | 0 | Revisar el Documento de Características del Entidad | 2019-02-08 A | 2019-02-08 A |  |
| 188 | 0 | Revisar el Plan del Proyecto | 2019-02-08 A | 2019-02-08 A | 187FF |
| 189 | 0 | Revisar la ETAPA del Proyecto | 2019-02-08 A | 2019-02-11 A | 186FF |
| 190 | 0 | HITO: FINALIZACION ETAPA 2 | 2019-02-11 A | 2019-02-11 A | 189FF |
| 191 | 0 | ETAPA 3: Migración de Datos, Configuración y Pruebas de Operación de Módulos - Módulos PRI | 2019-02-11 A | 2019-03-25 A | 179FF |
| 192 | 0 | Gestión General del Proyecto | 2019-02-11 A | 2019-02-13 A |  |
| 193 | 0 | Planificar cambio Organizacional | 2019-02-11 A | 2019-02-12 A |  |
| 194 | 0 | Planificar Entrenamiento a Usuarios Finales | 2019-02-12 A | 2019-02-12 A | 193FF |
| 195 | 0 | Definir y Preparar la Migración de Datos | 2019-02-12 A | 2019-02-13 A | 194FF |
| 196 | 0 | Configuración del Sistema en Producción | 2019-02-13 A | 2019-03-08 A | 192FF |
| 197 | 0 | Instalar el SIIM en Producción | 2019-02-13 A | 2019-02-13 A |  |
| 198 | 0 | Configurar Inicialización del Sistema | 2019-02-13 A | 2019-02-14 A | 197FF |
| 199 | 0 | Realizar la Migración de Datos | 2019-02-14 A | 2019-03-01 A | 198FF |
| 200 | 0 | Desarrollar Adaptaciones al Software | 2019-03-01 A | 2019-03-05 A | 199FF |
| 201 | 0 | Configuración del Sistema en base al Documento de Características del Entidad | 2019-03-05 A | 2019-03-06 A | 200FF |
| 202 | 0 | Configurar Interfaces | 2019-03-06 A | 2019-03-07 A | 201FF |
| 203 | 0 | Configurar Usuarios y Autorizaciones | 2019-03-07 A | 2019-03-08 A | 202FF |
| 204 | 0 | Gestión del Cambio Organizacional | 2019-03-08 A | 2019-03-08 A | 196FF |
| 205 | 0 | Conducir la comunicación de la Gestión de Cambios (si es aplicable) | 2019-03-08 A | 2019-03-08 A |  |
| 206 | 0 | Pruebas de validación del Sistema | 2019-03-08 A | 2019-03-14 A | 204FF |
| 207 | 0 | Mantener la Lista Maestra de Procesos de Entidad | 2019-03-08 A | 2019-03-11 A |  |
| 208 | 0 | Conducir Talleres de Validación | 2019-03-11 A | 2019-03-14 A | 207FF |
| 209 | 0 | 2.1 Administración Técnica | 2019-03-11 A | 2019-03-11 A |  |
| 210 | 0 | 2.2 Salud Ocupacional y Riesgos | 2019-03-11 A | 2019-03-11 A | 209FF |

| ID | WBS | Task | Start | Finish | Predecessors |
| --- | --- | --- | --- | --- | --- |
| 211 | 0 | 3.2 Adquisiciones | 2019-03-11 A | 2019-03-12 A | 210FF |
| 212 | 0 | 6.1 Administración de Bienes | 2019-03-12 A | 2019-03-12 A | 211FF |
| 213 | 0 | 8.1 Contabilidad | 2019-03-12 A | 2019-03-13 A | 212FF |
| 214 | 0 | 8.2 Presupuestos | 2019-03-13 A | 2019-03-13 A | 213FF |
| 215 | 0 | 13 CRM para Urbanizaciones | 2019-03-13 A | 2019-03-13 A | 214FF |
| 216 | 0 | 14 Dirección de Planificación Institucional (Incluye control de proyectos de Obras Públicas) | 2019-03-13 A | 2019-03-14 A | 215FF |
| 217 | 0 | 15.6 BI Servicios Corporativos | 2019-03-14 A | 2019-03-14 A | 216FF |
| 218 | 0 | 15.8 BI Planificación Institucional | 2019-03-14 A | 2019-03-14 A | 217FF |
| 219 | 0 | Pruebas de aceptacion del Sistema | 2019-03-14 A | 2019-03-21 A | 206FF |
| 220 | 0 | Definir casos de prueba y alcance | 2019-03-14 A | 2019-03-14 A |  |
| 221 | 0 | Preparar ambiente de pruebas | 2019-03-14 A | 2019-03-15 A | 220FF |
| 222 | 0 | Ejecutar el plan de pruebas | 2019-03-15 A | 2019-03-21 A | 221FF |
| 223 | 0 | 2.1 Administración Técnica | 2019-03-15 A | 2019-03-18 A |  |
| 224 | 0 | 2.2 Salud Ocupacional y Riesgos | 2019-03-18 A | 2019-03-18 A | 223FF |
| 225 | 0 | 3.2 Adquisiciones | 2019-03-18 A | 2019-03-19 A | 224FF |
| 226 | 0 | 6.1 Administración de Bienes | 2019-03-19 A | 2019-03-19 A | 225FF |
| 227 | 0 | 8.1 Contabilidad | 2019-03-19 A | 2019-03-19 A | 226FF |
| 228 | 0 | 8.2 Presupuestos | 2019-03-19 A | 2019-03-20 A | 227FF |
| 229 | 0 | 13 CRM para Urbanizaciones | 2019-03-20 A | 2019-03-20 A | 228FF |
| 230 | 0 | 14 Dirección de Planificación Institucional (Incluye control de proyectos de Obras Públicas) | 2019-03-20 A | 2019-03-20 A | 229FF |
| 231 | 0 | 15.6 BI Servicios Corporativos | 2019-03-20 A | 2019-03-21 A | 230FF |
| 232 | 0 | 15.8 BI Planificación Institucional | 2019-03-21 A | 2019-03-21 A | 231FF |
| 233 | 0 | Revisar los resultados de las pruebas y necesidades de cambios | 2019-03-14 A | 2019-03-15 A |  |
| 234 | 0 | Planificar Salida a Producción y Soporte | 2019-03-21 A | 2019-03-22 A | 219FF |
| 235 | 0 | Definir Plan de Salida a Producción | 2019-03-21 A | 2019-03-21 A |  |
| 236 | 0 | Planificar Estrategia de Soporte | 2019-03-21 A | 2019-03-22 A | 235FF |
| 237 | 0 | Planificar Administración del Sistema | 2019-03-22 A | 2019-03-22 A | 236FF |
| 238 | 0 | Revisar la ETAPA del Proyecto | 2019-03-22 A | 2019-03-25 A | 234FF |
| 239 | 0 | HITO: FINALIZACION ETAPA 3 | 2019-03-25 A | 2019-03-25 A | 238FF |
| 240 | 0 | ETAPA 4: Preparación Final previo Despliegue en Producción - Módulos PRI | 2019-03-25 A | 2019-04-08 A | 191FF |
| 241 | 0 | Gestión General del Proyecto | 2019-03-25 A | 2019-03-26 A |  |
| 242 | 0 | Confirmar el Plan de Entrenamiento | 2019-03-25 A | 2019-03-25 A |  |
| 243 | 0 | Finalizar plan de Salida a Producción | 2019-03-25 A | 2019-03-26 A | 242FF |
| 244 | 0 | Entrenamiento | 2019-03-26 A | 2019-04-02 A | 241FF |
| 245 | 0 | Entrenamiento de Usuarios Funcionales y Certificación de Procesos | 2019-03-26 A | 2019-03-29 A |  |
| 246 | 0 | 2.1 Administración Técnica | 2019-03-26 A | 2019-03-26 A |  |
| 247 | 0 | 2.2 Salud Ocupacional y Riesgos | 2019-03-26 A | 2019-03-27 A | 246FF |
| 248 | 0 | 3.2 Adquisiciones | 2019-03-27 A | 2019-03-27 A | 247FF |
| 249 | 0 | 6.1 Administración de Bienes | 2019-03-27 A | 2019-03-27 A | 248FF |
| 250 | 0 | 8.1 Contabilidad | 2019-03-27 A | 2019-03-28 A | 249FF |
| 251 | 0 | 8.2 Presupuestos | 2019-03-28 A | 2019-03-28 A | 250FF |
| 252 | 0 | 13 CRM para Urbanizaciones | 2019-03-28 A | 2019-03-29 A | 251FF |
| 253 | 0 | 14 Dirección de Planificación Institucional (Incluye control de proyectos de Obras Públicas) | 2019-03-29 A | 2019-03-29 A | 252FF |
| 254 | 0 | 15.6 BI Servicios Corporativos | 2019-03-29 A | 2019-03-29 A | 253FF |
| 255 | 0 | 15.8 BI Planificación Institucional | 2019-03-29 A | 2019-03-29 A | 254FF |
| 256 | 0 | Entrenamiento de Usuario Técnicos | 2019-03-26 A | 2019-04-02 A |  |
| 257 | 0 | Preparación del Sistema | 2019-04-02 A | 2019-04-03 A | 244FF |
| 258 | 0 | Completar la Administración del Sistema | 2019-04-02 A | 2019-04-03 A |  |
| 259 | 0 | Comprobación de la Puesta a Producción | 2019-04-03 A | 2019-04-03 A | 258FF |
| 260 | 0 | Transición | 2019-04-03 A | 2019-04-08 A | 257FF |
| 261 | 0 | Finalizar Procesamiento de Sistemas Legados | 2019-04-03 A | 2019-04-04 A |  |
| 262 | 0 | Realizar la Salida a Producción - Carga Inicial y Configuración Inicial | 2019-04-04 A | 2019-04-08 A | 261FF |
| 263 | 0 | Revisar la ETAPA del Proyecto | 2019-04-08 A | 2019-04-08 A | 260FF |
| 264 | 0 | HITO: FINALIZACION ETAPA 4 | 2019-04-08 A | 2019-04-08 A | 263FF |
| 265 | 0 | ETAPA 5: Despliegue en Producción y Soporte Técnico - Módulos PRI | 2019-04-08 A | 2019-05-14 A | 240FF |
| 266 | 0 | Soporte en Producción | 2019-04-08 A | 2019-04-25 A |  |
| 267 | 0 | Soporte durante la Salida a Producción | 2019-04-08 A | 2019-04-25 A |  |
| 268 | 0 | Resolver incidentes críticos | 2019-04-08 A | 2019-04-25 A | 263FF |
| 269 | 0 | Entregar el soporte y Administración al cliente | 2019-04-08 A | 2019-04-10 A | 263FF |
| 270 | 0 | Mejora Continua | 2019-04-25 A | 2019-05-14 A | 266FF |
| 271 | 0 | Monitoreo del Sistema y Acompañamiento ETAPA2 | 2019-04-25 A | 2019-05-14 A | 263FF |
| 272 | 0 | Ajustes y Configuraciones finales al Software acorde a necesidades Entidad | 2019-04-25 A | 2019-05-14 A | 263FF |
| 273 | 0 | Cierre de la FASE 2 | 2019-05-14 A | 2019-05-14 A | 270FF |
| 274 | 0 | Reunión de Cierre de la FASE 2 | 2019-05-14 A | 2019-05-14 A |  |
| 275 | 0 | HITO: FIN DE LA FASE 2 | 2019-05-14 A | 2019-05-14 A | 273FF |
| 276 | 0 | FASE 3: Implementación de Módulos de Planificación de Recursos Institucionales - PRI | 2019-04-08 A | 2019-07-10 A |  |
| 277 | 0 | ETAPA 1: Instalación del SIIM - Módulos PRI | 2019-04-08 A | 2019-04-12 A |  |
| 278 | 0 | Entrega e Instalación del Software | 2019-04-08 A | 2019-04-11 A |  |
| 279 | 0 | Instalar SIIM en Servidor | 2019-04-08 A | 2019-04-10 A |  |
| 280 | 0 | Instalar Módulos PRI | 2019-04-08 A | 2019-04-10 A | 264FF |

| ID | WBS | Task | Start | Finish | Predecessors |
| --- | --- | --- | --- | --- | --- |
| 281 | 0 | Entrega de Software | 2019-04-10 A | 2019-04-11 A | 279FF |
| 282 | 0 | Revisar la ETAPA del Proyecto | 2019-04-11 A | 2019-04-12 A | 278FF |
| 283 | 0 | HITO: FINALIZACION ETAPA 1 | 2019-04-12 A | 2019-04-12 A | 282FF |
| 284 | 0 | ETAPA 2: Levantamiento de Características Institucionales - Módulos PRI | 2019-04-12 A | 2019-04-23 A | 277FF |
| 285 | 0 | Actividades de Gestión del Proyecto | 2019-04-12 A | 2019-04-12 A |  |
| 286 | 0 | Revisión del Plan del Proyecto | 2019-04-12 A | 2019-04-12 A |  |
| 287 | 0 | Programar talleres de requerimientos de Entidad | 2019-04-12 A | 2019-04-12 A | 286FF |
| 288 | 0 | Sesiones de Requerimientos del Entidad | 2019-04-12 A | 2019-04-19 A | 285FF |
| 289 | 0 | Conducir Sesiones de Requerimientos | 2019-04-12 A | 2019-04-17 A |  |
| 290 | 0 | Crear Documento de Características del Entidad | 2019-04-17 A | 2019-04-19 A | 289FF |
| 291 | 0 | Revisar el Documento de Características del Entidad | 2019-04-19 A | 2019-04-22 A | 288FF |
| 292 | 0 | Revisar el Documento de Características del Entidad | 2019-04-19 A | 2019-04-22 A |  |
| 293 | 0 | Revisar el Plan del Proyecto | 2019-04-22 A | 2019-04-22 A | 292FF |
| 294 | 0 | Revisar la ETAPA del Proyecto | 2019-04-22 A | 2019-04-23 A | 291FF |
| 295 | 0 | HITO: FINALIZACION ETAPA 2 | 2019-04-23 A | 2019-04-23 A | 294FF |
| 296 | 0 | ETAPA 3: Migración de Datos, Configuración y Pruebas de Operación de Módulos - Módulos PRI | 2019-04-23 A | 2019-06-03 A | 284FF |
| 297 | 0 | Gestión General del Proyecto | 2019-04-23 A | 2019-04-24 A |  |
| 298 | 0 | Planificar cambio Organizacional | 2019-04-23 A | 2019-04-23 A |  |
| 299 | 0 | Planificar Entrenamiento a Usuarios Finales | 2019-04-23 A | 2019-04-24 A | 298FF |
| 300 | 0 | Definir y Preparar la Migración de Datos | 2019-04-24 A | 2019-04-24 A | 299FF |
| 301 | 0 | Configuración del Sistema en Producción | 2019-04-24 A | 2019-05-20 A | 297FF |
| 302 | 0 | Instalar el SIIM en Producción | 2019-04-24 A | 2019-04-25 A |  |
| 303 | 0 | Configurar Inicialización del Sistema | 2019-04-25 A | 2019-04-26 A | 302FF |
| 304 | 0 | Realizar la Migración de Datos | 2019-04-26 A | 2019-05-09 A | 303FF |
| 305 | 0 | Desarrollar Adaptaciones al Software | 2019-05-09 A | 2019-05-15 A | 304FF |
| 306 | 0 | Configuración del Sistema en base al Documento de Características del Entidad | 2019-05-15 A | 2019-05-17 A | 305FF |
| 307 | 0 | Configurar Interfaces | 2019-05-17 A | 2019-05-20 A | 306FF |
| 308 | 0 | Configurar Usuarios y Autorizaciones | 2019-05-20 A | 2019-05-20 A | 307FF |
| 309 | 0 | Gestión del Cambio Organizacional | 2019-05-20 A | 2019-05-22 A | 301FF |
| 310 | 0 | Conducir la comunicación de la Gestión de Cambios (si es aplicable) | 2019-05-20 A | 2019-05-22 A |  |
| 311 | 0 | Pruebas de validación/aceptación del Sistema | 2019-05-22 A | 2019-05-24 A | 309FF |
| 312 | 0 | Mantener la Lista Maestra de Procesos de Entidad | 2019-05-22 A | 2019-05-23 A |  |
| 313 | 0 | Conducir Talleres de Validación | 2019-05-23 A | 2019-05-24 A | 312FF |
| 314 | 0 | 3.1 Compras Públicas | 2019-05-23 A | 2019-05-23 A |  |
| 315 | 0 | 6.2 Servicios Generales | 2019-05-23 A | 2019-05-23 A | 314FF |
| 316 | 0 | 8.5 Gestión Jurídica - Financiera | 2019-05-23 A | 2019-05-23 A | 315FF |
| 317 | 0 | 15.2 BI Financiero | 2019-05-23 A | 2019-05-24 A | 316FF |
| 318 | 0 | 15.3 BI Administración del Talento Humano | 2019-05-24 A | 2019-05-24 A | 317FF |
| 319 | 0 | 15.4 BI Compras Públicas | 2019-05-24 A | 2019-05-24 A | 318FF |
| 320 | 0 | 15.9 Tablero de Control | 2019-05-24 A | 2019-05-24 A | 319FF |
| 321 | 0 | Pruebas de aceptacion del Sistema | 2019-05-24 A | 2019-05-30 A | 311FF |
| 322 | 0 | Definir casos de prueba y alcance | 2019-05-24 A | 2019-05-27 A |  |
| 323 | 0 | Preparar ambiente de pruebas | 2019-05-27 A | 2019-05-28 A | 322FF |
| 324 | 0 | Ejecutar el plan de pruebas | 2019-05-28 A | 2019-05-29 A | 323FF |
| 325 | 0 | 3.1 Compras Públicas | 2019-05-28 A | 2019-05-28 A |  |
| 326 | 0 | 6.2 Servicios Generales | 2019-05-28 A | 2019-05-28 A | 325FF |
| 327 | 0 | 8.5 Gestión Jurídica - Financiera | 2019-05-28 A | 2019-05-28 A | 326FF |
| 328 | 0 | 15.2 BI Financiero | 2019-05-28 A | 2019-05-29 A | 327FF |
| 329 | 0 | 15.3 BI Administración del Talento Humano | 2019-05-29 A | 2019-05-29 A | 328FF |
| 330 | 0 | 15.4 BI Compras Públicas | 2019-05-29 A | 2019-05-29 A | 329FF |
| 331 | 0 | 15.9 Tablero de Control | 2019-05-29 A | 2019-05-29 A | 330FF |
| 332 | 0 | Revisar los resultados de las pruebas y necesidades de cambios | 2019-05-29 A | 2019-05-30 A | 331FF, 320FF |
| 333 | 0 | Planificar Salida a Producción y Soporte | 2019-05-30 A | 2019-05-31 A | 321FF |
| 334 | 0 | Definir Plan de Salida a Producción | 2019-05-30 A | 2019-05-31 A |  |
| 335 | 0 | Planificar Estrategia de Soporte | 2019-05-31 A | 2019-05-31 A | 334FF |
| 336 | 0 | Planificar Administración del Sistema | 2019-05-31 A | 2019-05-31 A | 335FF |
| 337 | 0 | Revisar la ETAPA del Proyecto | 2019-05-31 A | 2019-06-03 A | 333FF |
| 338 | 0 | HITO: FINALIZACION ETAPA 3 | 2019-06-03 A | 2019-06-03 A | 337FF |
| 339 | 0 | ETAPA 4: Preparación Final previo Despliegue en Producción - Módulos PRI | 2019-06-03 A | 2019-06-18 A | 296FF |
| 340 | 0 | Gestión General del Proyecto | 2019-06-03 A | 2019-06-04 A |  |
| 341 | 0 | Confirmar el Plan de Entrenamiento | 2019-06-03 A | 2019-06-04 A |  |
| 342 | 0 | Finalizar plan de Salida a Producción | 2019-06-04 A | 2019-06-04 A | 341FF |
| 343 | 0 | Entrenamiento | 2019-06-04 A | 2019-06-12 A | 340FF |
| 344 | 0 | Entrenamiento de Usuarios Funcionales y Certificación de Procesos | 2019-06-04 A | 2019-06-10 A |  |
| 345 | 0 | 3.1 Compras Públicas | 2019-06-04 A | 2019-06-05 A |  |
| 346 | 0 | 6.2 Servicios Generales | 2019-06-05 A | 2019-06-05 A | 345FF |
| 347 | 0 | 8.5 Gestión Jurídica - Financiera | 2019-06-05 A | 2019-06-06 A | 346FF |
| 348 | 0 | 15.2 BI Financiero | 2019-06-06 A | 2019-06-06 A | 347FF |
| 349 | 0 | 15.3 BI Administración del Talento Humano | 2019-06-06 A | 2019-06-07 A | 348FF |
| 350 | 0 | 15.4 BI Compras Públicas | 2019-06-07 A | 2019-06-07 A | 349FF |

| ID | WBS | Task | Start | Finish | Predecessors |
| --- | --- | --- | --- | --- | --- |
| 351 | 0 | 15.9 Tablero de Control | 2019-06-07 A | 2019-06-10 A | 350FF |
| 352 | 0 | Entrenamiento de Usuario Técnicos | 2019-06-10 A | 2019-06-12 A | 351FF |
| 353 | 0 | Preparación del Sistema | 2019-06-12 A | 2019-06-14 A | 343FF |
| 354 | 0 | Completar la Administración del Sistema | 2019-06-12 A | 2019-06-13 A |  |
| 355 | 0 | Comprobación de la Puesta a Producción | 2019-06-13 A | 2019-06-14 A | 354FF |
| 356 | 0 | Transición | 2019-06-14 A | 2019-06-18 A | 353FF |
| 357 | 0 | Finalizar Procesamiento de Sistemas Legados | 2019-06-14 A | 2019-06-14 A |  |
| 358 | 0 | Realizar la Salida a Producción - Carga Inicial y Configuración Inicial | 2019-06-14 A | 2019-06-18 A | 357FF |
| 359 | 0 | Revisar la ETAPA del Proyecto | 2019-06-18 A | 2019-06-18 A | 356FF |
| 360 | 0 | HITO: FINALIZACION ETAPA 4 | 2019-06-18 A | 2019-06-18 A | 359FF |
| 361 | 0 | ETAPA 5: Despliegue en Producción y Soporte Técnico - Módulos PRI | 2019-06-21 A | 2019-07-10 A | 339FF |
| 362 | 0 | Soporte en Producción | 2019-06-21 A | 2019-07-04 A |  |
| 363 | 0 | Soporte durante la Salida a Producción | 2019-06-21 A | 2019-06-28 A |  |
| 364 | 0 | Resolver incidentes críticos | 2019-06-28 A | 2019-07-02 A | 363FF |
| 365 | 0 | Entregar el soporte y Administración al cliente | 2019-07-02 A | 2019-07-04 A | 364FF |
| 366 | 0 | Mejora Continua | 2019-06-21 A | 2019-07-10 A | 339FF |
| 367 | 0 | Monitoreo del Sistema y Acompañamiento | 2019-06-21 A | 2019-07-10 A |  |
| 368 | 0 | Ajustes y Configuraciones finales al Software acorde a necesidades Entidad | 2019-06-21 A | 2019-07-10 A | 339FF |
| 369 | 0 | Cierre de la FASE 3 y Proyecto | 2019-07-10 A | 2019-07-10 A | 366FF |
| 370 | 0 | Reunión de Cierre de la FASE 3 y Proyecto | 2019-07-10 A | 2019-07-10 A |  |
| 371 | 0 | HITO: FIN DE LA FASE 3 y Proyecto | 2019-07-10 A | 2019-07-10 A | 366FF |
