# 20190122- Plan del Proyecto de Implementacion del SIIM Daule

Schedule from MS Project XML.

## Calendars

- Estándar: Mon-Fri 09:00-13:00, 15:00-19:00; Sat-Sun off.

## Resources

| Resource |
| --- |
| Consultor Especialista en Procesos de GADs PlanERP |

## Schedule

| ID | WBS | Task | Duration |
| --- | --- | --- | --- |
| 1 | 2 | Programa de Implementación SIIM | 0d |
| 2 | 3 | FASE 1: Implementación de Módulos de Servicio al Cliente (SC) y Atención al Ciudadano (AC) | 0d |
| 3 | 4 | ETAPA 1: Preparación del Proyecto e Instalación del SIIM - Módulos SC y AC | 0d |
| 4 | 5 | Actividades de Gestión del Proyecto | 0d |
| 5 | 6 | Revisión de Información de Contrato y Anexos | 0d |
| 6 | 7 | Definir la Organización del Proyecto | 0d |
| 7 | 8 | Kick-off Interno del Proyecto | 0d |
| 8 | 9 | Preparación del kick-off del Proyecto | 0d |
| 9 | 10 | Comunicación con el Cliente | 0d |
| 10 | 11 | Crear la presentación del kick-off | 0d |
| 11 | 12 | Reunión de Kick-off | 0d |
| 12 | 13 | Realizar la reunión de kick-off | 0d |
| 13 | 14 | Entrega e Instalación del Software | 0d |
| 14 | 15 | Instalar SIIM en Servidor | 0d |
| 15 | 16 | 1 Dirección de Desarrollo Territorial (No incluye Catastro) | 0d |
| 16 | 17 | 4 Dirección de Justicia y Vigilancia | 0d |
| 17 | 18 | 5 Dirección de Desarrollo Humano y Social | 0d |
| 18 | 19 | 8.3 Rentas | 0d |
| 19 | 20 | 8.4 Tesorería | 0d |
| 20 | 21 | 9.1 Mercados | 0d |
| 21 | 22 | 9.2 Cementerio | 0d |
| 22 | 23 | 9.3 Camal | 0d |
| 23 | 24 | 10 Registro de la Propiedad y Mercantil | 0d |
| 24 | 25 | 11 Administración de bomberos | 0d |
| 25 | 26 | 12 CRM para ciudadanos. Ventanilla Única | 0d |
| 26 | 27 | 15.1 BI Desarrollo Territorial | 0d |
| 27 | 28 | 15.5 BI Obras Públicas Municipales | 0d |
| 28 | 29 | 15.7 BI Registro de la Propiedad y Mercantil | 0d |
| 29 | 30 | 16.1 Consultas Portal Web | 0d |
| 30 | 31 | 16.2 Aplicación para móviles (APP) | 0d |
| 31 | 32 | Entrega de Software | 0d |
| 32 | 33 | Revisar la ETAPA del Proyecto | 0d |
| 33 | 34 | HITO: FINALIZACION ETAPA 1 | 0d |
| 34 | 35 | ETAPA 2: Levantamiento de Características Institucionales - Módulos SC y AC | 0d |
| 35 | 36 | Actividades de Gestión del Proyecto | 0d |
| 36 | 37 | Revisión del Plan del Proyecto | 0d |
| 37 | 38 | Programar talleres de requerimientos de Entidad | 0d |
| 38 | 39 | Sesiones de Requerimientos del Entidad | 0d |
| 39 | 40 | Conducir Sesiones de Requerimientos | 0d |
| 40 | 41 | Crear Documento de Características del Entidad | 0d |
| 41 | 42 | Revisar el Documento de Características del Entidad | 0d |
| 42 | 43 | Revisar el Documento de Características del Entidad | 0d |
| 43 | 44 | Revisar el Plan del Proyecto | 0d |
| 44 | 45 | Revisar la ETAPA del Proyecto | 0d |
| 45 | 46 | HITO: FINALIZACION ETAPA 2 | 0d |
| 46 | 47 | ETAPA 3: Migración de Datos, Configuración y Pruebas de Operación - Módulos SC y AC | 0d |
| 47 | 48 | Gestión General del Proyecto | 0d |
| 48 | 49 | Planificar cambio Organizacional | 0d |
| 49 | 50 | Planificar Entrenamiento a Usuarios Finales | 0d |
| 50 | 51 | Definir y Preparar la Migración de Datos | 0d |
| 51 | 52 | Configuración del Sistema en Producción | 0d |
| 52 | 53 | Instalar el SIIM en Producción | 0d |
| 53 | 54 | Configurar Inicialización del Sistema | 0d |
| 54 | 55 | Realizar la Migración de Datos | 0d |
| 55 | 56 | Desarrollar Adaptaciones al Software | 0d |
| 56 | 57 | Configuración del Sistema en base al Documento de Características del Entidad | 0d |
| 57 | 58 | Configurar Interfaces | 0d |
| 58 | 59 | Configurar Usuarios y Autorizaciones | 0d |
| 59 | 60 | Gestión del Cambio Organizacional | 0d |
| 60 | 61 | Conducir la comunicación de la Gestión de Cambios (si es aplicable) | 0d |
| 61 | 62 | Pruebas de validación/aceptación del Sistema | 0d |
| 62 | 63 | Mantener la Lista Maestra de Procesos de Entidad | 0d |
| 63 | 64 | Conducir Talleres de Validación | 0d |
| 64 | 65 | 1 Dirección de Desarrollo Territorial (No incluye Catastro) | 0d |
| 65 | 66 | 4 Dirección de Justicia y Vigilancia | 0d |
| 66 | 67 | 5 Dirección de Desarrollo Humano y Social | 0d |
| 67 | 68 | 8.3 Rentas | 0d |
| 68 | 69 | 8.4 Tesorería | 0d |
| 69 | 70 | 9.1 Mercados | 0d |
| 70 | 71 | 9.2 Cementerio | 0d |

| ID | WBS | Task | Duration |
| --- | --- | --- | --- |
| 71 | 72 | 9.3 Camal | 0d |
| 72 | 73 | 10 Registro de la Propiedad y Mercantil | 0d |
| 73 | 74 | 11 Administración de bomberos | 0d |
| 74 | 75 | 12 CRM para ciudadanos. Ventanilla Única | 0d |
| 75 | 76 | 15.1 BI Desarrollo Territorial | 0d |
| 76 | 77 | 15.5 BI Obras Públicas Municipales | 0d |
| 77 | 78 | 15.7 BI Registro de la Propiedad y Mercantil | 0d |
| 78 | 79 | 16.1 Consultas Portal Web | 0d |
| 79 | 80 | 16.2 Aplicación para móviles (APP) | 0d |
| 80 | 81 | Pruebas de Aceptacion Sistema | 0d |
| 81 | 82 | Definir casos de prueba y alcance | 0d |
| 82 | 83 | Preparar ambiente de pruebas | 0d |
| 83 | 84 | Ejecutar el plan de pruebas de Aceptacion del Sistema | 0d |
| 84 | 85 | 1 Dirección de Desarrollo Territorial (No incluye Catastro) | 0d |
| 85 | 86 | 4 Dirección de Justicia y Vigilancia | 0d |
| 86 | 87 | 5 Dirección de Desarrollo Humano y Social | 0d |
| 87 | 88 | 8.3 Rentas | 0d |
| 88 | 89 | 8.4 Tesorería | 0d |
| 89 | 90 | 9.1 Mercados | 0d |
| 90 | 91 | 9.2 Cementerio | 0d |
| 91 | 92 | 9.3 Camal | 0d |
| 92 | 93 | 10 Registro de la Propiedad y Mercantil | 0d |
| 93 | 94 | 11 Administración de bomberos | 0d |
| 94 | 95 | 12 CRM para ciudadanos. Ventanilla Única | 0d |
| 95 | 96 | 15.1 BI Desarrollo Territorial | 0d |
| 96 | 97 | 15.5 BI Obras Públicas Municipales | 0d |
| 97 | 98 | 15.7 BI Registro de la Propiedad y Mercantil | 0d |
| 98 | 99 | 16.1 Consultas Portal Web | 0d |
| 99 | 100 | 16.2 Aplicación para móviles (APP) | 0d |
| 100 | 101 | Revisar los resultados de las pruebas y necesidades de cambios | 0d |
| 101 | 102 | Planificar Salida a Producción y Soporte | 0d |
| 102 | 103 | Definir Plan de Salida a Producción | 0d |
| 103 | 104 | Planificar Estrategia de Soporte | 0d |
| 104 | 105 | Planificar Administración del Sistema | 0d |
| 105 | 106 | Revisar la ETAPA del Proyecto | 0d |
| 106 | 107 | HITO: FINALIZACION ETAPA 3 | 0d |
| 107 | 108 | ETAPA 4: Preparación Final previo Despliegue en Producción - Módulos SC y AC | 0d |
| 108 | 109 | Gestión General del Proyecto | 0d |
| 109 | 110 | Confirmar el Plan de Entrenamiento | 0d |
| 110 | 111 | Finalizar plan de Salida a Producción | 0d |
| 111 | 112 | Entrenamiento en Modulos de Areas Funcionales Fase 1 | 0d |
| 112 | 113 | Entrenamiento de Usuarios Funcionales y Certificación de Procesos | 0d |
| 113 | 114 | 1 Dirección de Desarrollo Territorial (No incluye Catastro) | 0d |
| 114 | 115 | 4 Dirección de Justicia y Vigilancia | 0d |
| 115 | 116 | 5 Dirección de Desarrollo Humano y Social | 0d |
| 116 | 117 | 8.3 Rentas | 0d |
| 117 | 118 | 8.4 Tesorería | 0d |
| 118 | 119 | 9.1 Mercados | 0d |
| 119 | 120 | 9.2 Cementerio | 0d |
| 120 | 121 | 9.3 Camal | 0d |
| 121 | 122 | 10 Registro de la Propiedad y Mercantil | 0d |
| 122 | 123 | 11 Administración de bomberos | 0d |
| 123 | 124 | 12 CRM para ciudadanos. Ventanilla Única | 0d |
| 124 | 125 | 15.1 BI Desarrollo Territorial | 0d |
| 125 | 126 | 15.5 BI Obras Públicas Municipales | 0d |
| 126 | 127 | 15.7 BI Registro de la Propiedad y Mercantil | 0d |
| 127 | 128 | 16.1 Consultas Portal Web | 0d |
| 128 | 129 | 16.2 Aplicación para móviles (APP) | 0d |
| 129 | 130 | Entrenamiento de Usuario Técnicos | 0d |
| 130 | 131 | Preparación del Sistema | 0d |
| 131 | 132 | Completar la Administración del Sistema | 0d |
| 132 | 133 | Comprobación de la Puesta a Producción | 0d |
| 133 | 134 | Transición | 0d |
| 134 | 135 | Finalizar Procesamiento de Sistemas Legados | 0d |
| 135 | 136 | Realizar la Salida a Producción - Carga Inicial y Configuración Inicial | 0d |
| 136 | 137 | Revisar la ETAPA del Proyecto | 0d |
| 137 | 138 | HITO: FINALIZACION ETAPA 4 | 0d |
| 138 | 139 | ETAPA 5: Despliegue en Producción y Soporte Técnico - Módulos SC y AC | 0d |
| 139 | 140 | Soporte en Producción | 0d |
| 140 | 141 | Soporte durante la Salida a Producción | 0d |

| ID | WBS | Task | Duration |
| --- | --- | --- | --- |
| 141 | 142 | Resolver incidentes críticos | 0d |
| 142 | 143 | Entregar el soporte y Administración al cliente | 0d |
| 143 | 144 | Mejora Continua | 0d |
| 144 | 145 | Monitoreo del Sistema y Acompañamiento ETAPA1 | 0d |
| 145 | 146 | Ajustes y Configuraciones finales al Software acorde a necesidades Entidad | 0d |
| 146 | 147 | Cierre de la ETAPA 5 | 0d |
| 147 | 148 | Reunión de Cierre de la ETAPA 5 | 0d |
| 148 | 149 | HITO: FIN DE LA ETAPA 5 | 0d |
| 149 | 150 | ETAPA 6: Estabilización, Apoyo Emisión 2019 y Desarrollo de funcionalidades no establecidas en el Alcance Contractual | 0d |
| 150 | 151 | Depuración de Errores de Calidad de Información fuente migrada (Base Oracle) | 0d |
| 151 | 152 | Soporte y Mantenimiento de Módulos de la Fase 1 | 0d |
| 152 | 153 | Adaptaciones a Software para incluir Nuevas funcionalidades no contempladas en alcance proyecto | 0d |
| 153 | 154 | Implementación de Licencia temporal de Modulo de Catastro Urbano SIIM | 0d |
| 154 | 155 | Migración de información de Emisión de Impuestos de Catastro Urbano 2019 | 0d |
| 155 | 156 | Creación de interfaces mediante ETLs para integración entre Sistema Oracle y SIIM para la recaudación de Impuestos 2019 de Catastro Urbano | 0d |
| 156 | 157 | Soporte en Recaudación de Impuestos de Catastro urbano y mejoras 2019 | 0d |
| 157 | 158 | Cierre de la FASE 1 | 0d |
| 158 | 159 | Reunión de Cierre de la FASE 1 | 0d |
| 159 | 160 | HITO: FIN DE LA FASE 1 | 0d |
| 160 | 161 | FASE 2: Implementación de Módulos de Planificación de Recursos Institucionales - PRI | 0d |
| 161 | 162 | ETAPA 1: Instalación del SIIM - Módulos PRI | 0d |
| 162 | 163 | Entrega e Instalación del Software | 0d |
| 163 | 164 | Instalar SIIM en Servidor | 0d |
| 164 | 165 | Instalar Módulos PRI | 0d |
| 165 | 166 | 2.1 Administración Técnica | 0d |
| 166 | 167 | 2.2 Salud Ocupacional y Riesgos | 0d |
| 167 | 168 | 3.2 Adquisiciones | 0d |
| 168 | 169 | 6.1 Administración de Bienes | 0d |
| 169 | 170 | 8.1 Contabilidad | 0d |
| 170 | 171 | 8.2 Presupuestos | 0d |
| 171 | 172 | 13 CRM para Urbanizaciones | 0d |
| 172 | 173 | 14 Dirección de Planificación Institucional (Incluye control de proyectos de Obras Públicas | 0d |
| 173 | 174 | 15.6 Servicios Corporativos | 0d |
| 174 | 175 | 15.8 BI Planificación Institucional | 0d |
| 175 | 176 | Entrega de Software | 0d |
| 176 | 177 | Revisar la ETAPA del Proyecto | 0d |
| 177 | 178 | HITO: FINALIZACION ETAPA 1 | 0d |
| 178 | 179 | ETAPA 2: Levantamiento de Características Institucionales - Módulos PRI | 0d |
| 179 | 180 | Actividades de Gestión del Proyecto | 0d |
| 180 | 181 | Revisión del Plan del Proyecto | 0d |
| 181 | 182 | Programar talleres de requerimientos de Entidad | 0d |
| 182 | 183 | Sesiones de Requerimientos del Entidad | 0d |
| 183 | 184 | Conducir Sesiones de Requerimientos | 0d |
| 184 | 185 | Crear Documento de Características del Entidad | 0d |
| 185 | 186 | Revisar el Documento de Características del Entidad | 0d |
| 186 | 187 | Revisar el Documento de Características del Entidad | 0d |
| 187 | 188 | Revisar el Plan del Proyecto | 0d |
| 188 | 189 | Revisar la ETAPA del Proyecto | 0d |
| 189 | 190 | HITO: FINALIZACION ETAPA 2 | 0d |
| 190 | 191 | ETAPA 3: Migración de Datos, Configuración y Pruebas de Operación de Módulos - Módulos PRI | 0d |
| 191 | 192 | Gestión General del Proyecto | 0d |
| 192 | 193 | Planificar cambio Organizacional | 0d |
| 193 | 194 | Planificar Entrenamiento a Usuarios Finales | 0d |
| 194 | 195 | Definir y Preparar la Migración de Datos | 0d |
| 195 | 196 | Configuración del Sistema en Producción | 0d |
| 196 | 197 | Instalar el SIIM en Producción | 0d |
| 197 | 198 | Configurar Inicialización del Sistema | 0d |
| 198 | 199 | Realizar la Migración de Datos | 0d |
| 199 | 200 | Desarrollar Adaptaciones al Software | 0d |
| 200 | 201 | Configuración del Sistema en base al Documento de Características del Entidad | 0d |
| 201 | 202 | Configurar Interfaces | 0d |
| 202 | 203 | Configurar Usuarios y Autorizaciones | 0d |
| 203 | 204 | Gestión del Cambio Organizacional | 0d |
| 204 | 205 | Conducir la comunicación de la Gestión de Cambios (si es aplicable) | 0d |
| 205 | 206 | Pruebas de validación del Sistema | 0d |
| 206 | 207 | Mantener la Lista Maestra de Procesos de Entidad | 0d |
| 207 | 208 | Conducir Talleres de Validación | 0d |
| 208 | 209 | 2.1 Administración Técnica | 0d |
| 209 | 210 | 2.2 Salud Ocupacional y Riesgos | 0d |
| 210 | 211 | 3.2 Adquisiciones | 0d |

| ID | WBS | Task | Duration |
| --- | --- | --- | --- |
| 211 | 212 | 6.1 Administración de Bienes | 0d |
| 212 | 213 | 8.1 Contabilidad | 0d |
| 213 | 214 | 8.2 Presupuestos | 0d |
| 214 | 215 | 13 CRM para Urbanizaciones | 0d |
| 215 | 216 | 14 Dirección de Planificación Institucional (Incluye control de proyectos de Obras Públicas) | 0d |
| 216 | 217 | 15.6 BI Servicios Corporativos | 0d |
| 217 | 218 | 15.8 BI Planificación Institucional | 0d |
| 218 | 219 | Pruebas de aceptacion del Sistema | 0d |
| 219 | 220 | Definir casos de prueba y alcance | 0d |
| 220 | 221 | Preparar ambiente de pruebas | 0d |
| 221 | 222 | Ejecutar el plan de pruebas | 0d |
| 222 | 223 | 2.1 Administración Técnica | 0d |
| 223 | 224 | 2.2 Salud Ocupacional y Riesgos | 0d |
| 224 | 225 | 3.2 Adquisiciones | 0d |
| 225 | 226 | 6.1 Administración de Bienes | 0d |
| 226 | 227 | 8.1 Contabilidad | 0d |
| 227 | 228 | 8.2 Presupuestos | 0d |
| 228 | 229 | 13 CRM para Urbanizaciones | 0d |
| 229 | 230 | 14 Dirección de Planificación Institucional (Incluye control de proyectos de Obras Públicas) | 0d |
| 230 | 231 | 15.6 BI Servicios Corporativos | 0d |
| 231 | 232 | 15.8 BI Planificación Institucional | 0d |
| 232 | 233 | Revisar los resultados de las pruebas y necesidades de cambios | 0d |
| 233 | 234 | Planificar Salida a Producción y Soporte | 0d |
| 234 | 235 | Definir Plan de Salida a Producción | 0d |
| 235 | 236 | Planificar Estrategia de Soporte | 0d |
| 236 | 237 | Planificar Administración del Sistema | 0d |
| 237 | 238 | Revisar la ETAPA del Proyecto | 0d |
| 238 | 239 | HITO: FINALIZACION ETAPA 3 | 0d |
| 239 | 240 | ETAPA 4: Preparación Final previo Despliegue en Producción - Módulos PRI | 0d |
| 240 | 241 | Gestión General del Proyecto | 0d |
| 241 | 242 | Confirmar el Plan de Entrenamiento | 0d |
| 242 | 243 | Finalizar plan de Salida a Producción | 0d |
| 243 | 244 | Entrenamiento | 0d |
| 244 | 245 | Entrenamiento de Usuarios Funcionales y Certificación de Procesos | 0d |
| 245 | 246 | 2.1 Administración Técnica | 0d |
| 246 | 247 | 2.2 Salud Ocupacional y Riesgos | 0d |
| 247 | 248 | 3.2 Adquisiciones | 0d |
| 248 | 249 | 6.1 Administración de Bienes | 0d |
| 249 | 250 | 8.1 Contabilidad | 0d |
| 250 | 251 | 8.2 Presupuestos | 0d |
| 251 | 252 | 13 CRM para Urbanizaciones | 0d |
| 252 | 253 | 14 Dirección de Planificación Institucional (Incluye control de proyectos de Obras Públicas) | 0d |
| 253 | 254 | 15.6 BI Servicios Corporativos | 0d |
| 254 | 255 | 15.8 BI Planificación Institucional | 0d |
| 255 | 256 | Entrenamiento de Usuario Técnicos | 0d |
| 256 | 257 | Preparación del Sistema | 0d |
| 257 | 258 | Completar la Administración del Sistema | 0d |
| 258 | 259 | Comprobación de la Puesta a Producción | 0d |
| 259 | 260 | Transición | 0d |
| 260 | 261 | Finalizar Procesamiento de Sistemas Legados | 0d |
| 261 | 262 | Realizar la Salida a Producción - Carga Inicial y Configuración Inicial | 0d |
| 262 | 263 | Revisar la ETAPA del Proyecto | 0d |
| 263 | 264 | HITO: FINALIZACION ETAPA 4 | 0d |
| 264 | 265 | ETAPA 5: Despliegue en Producción y Soporte Técnico - Módulos PRI | 0d |
| 265 | 266 | Soporte en Producción | 0d |
| 266 | 267 | Soporte durante la Salida a Producción | 0d |
| 267 | 268 | Resolver incidentes críticos | 0d |
| 268 | 269 | Entregar el soporte y Administración al cliente | 0d |
| 269 | 270 | Mejora Continua | 0d |
| 270 | 271 | Monitoreo del Sistema y Acompañamiento ETAPA2 | 0d |
| 271 | 272 | Ajustes y Configuraciones finales al Software acorde a necesidades Entidad | 0d |
| 272 | 273 | Cierre de la FASE 2 | 0d |
| 273 | 274 | Reunión de Cierre de la FASE 2 | 0d |
| 274 | 275 | HITO: FIN DE LA FASE 2 | 0d |
| 275 | 276 | FASE 3: Implementación de Módulos de Planificación de Recursos Institucionales - PRI | 0d |
| 276 | 277 | ETAPA 1: Instalación del SIIM - Módulos PRI | 0d |
| 277 | 278 | Entrega e Instalación del Software | 0d |
| 278 | 279 | Instalar SIIM en Servidor | 0d |
| 279 | 280 | Instalar Módulos PRI | 0d |
| 280 | 281 | Entrega de Software | 0d |

| ID | WBS | Task | Duration |
| --- | --- | --- | --- |
| 281 | 282 | Revisar la ETAPA del Proyecto | 0d |
| 282 | 283 | HITO: FINALIZACION ETAPA 1 | 0d |
| 283 | 284 | ETAPA 2: Levantamiento de Características Institucionales - Módulos PRI | 0d |
| 284 | 285 | Actividades de Gestión del Proyecto | 0d |
| 285 | 286 | Revisión del Plan del Proyecto | 0d |
| 286 | 287 | Programar talleres de requerimientos de Entidad | 0d |
| 287 | 288 | Sesiones de Requerimientos del Entidad | 0d |
| 288 | 289 | Conducir Sesiones de Requerimientos | 0d |
| 289 | 290 | Crear Documento de Características del Entidad | 0d |
| 290 | 291 | Revisar el Documento de Características del Entidad | 0d |
| 291 | 292 | Revisar el Documento de Características del Entidad | 0d |
| 292 | 293 | Revisar el Plan del Proyecto | 0d |
| 293 | 294 | Revisar la ETAPA del Proyecto | 0d |
| 294 | 295 | HITO: FINALIZACION ETAPA 2 | 0d |
| 295 | 296 | ETAPA 3: Migración de Datos, Configuración y Pruebas de Operación de Módulos - Módulos PRI | 0d |
| 296 | 297 | Gestión General del Proyecto | 0d |
| 297 | 298 | Planificar cambio Organizacional | 0d |
| 298 | 299 | Planificar Entrenamiento a Usuarios Finales | 0d |
| 299 | 300 | Definir y Preparar la Migración de Datos | 0d |
| 300 | 301 | Configuración del Sistema en Producción | 0d |
| 301 | 302 | Instalar el SIIM en Producción | 0d |
| 302 | 303 | Configurar Inicialización del Sistema | 0d |
| 303 | 304 | Realizar la Migración de Datos | 0d |
| 304 | 305 | Desarrollar Adaptaciones al Software | 0d |
| 305 | 306 | Configuración del Sistema en base al Documento de Características del Entidad | 0d |
| 306 | 307 | Configurar Interfaces | 0d |
| 307 | 308 | Configurar Usuarios y Autorizaciones | 0d |
| 308 | 309 | Gestión del Cambio Organizacional | 0d |
| 309 | 310 | Conducir la comunicación de la Gestión de Cambios (si es aplicable) | 0d |
| 310 | 311 | Pruebas de validación/aceptación del Sistema | 0d |
| 311 | 312 | Mantener la Lista Maestra de Procesos de Entidad | 0d |
| 312 | 313 | Conducir Talleres de Validación | 0d |
| 313 | 314 | 3.1 Compras Públicas | 0d |
| 314 | 315 | 6.2 Servicios Generales | 0d |
| 315 | 316 | 8.5 Gestión Jurídica - Financiera | 0d |
| 316 | 317 | 15.2 BI Financiero | 0d |
| 317 | 318 | 15.3 BI Administración del Talento Humano | 0d |
| 318 | 319 | 15.4 BI Compras Públicas | 0d |
| 319 | 320 | 15.9 Tablero de Control | 0d |
| 320 | 321 | Pruebas de aceptacion del Sistema | 0d |
| 321 | 322 | Definir casos de prueba y alcance | 0d |
| 322 | 323 | Preparar ambiente de pruebas | 0d |
| 323 | 324 | Ejecutar el plan de pruebas | 0d |
| 324 | 325 | 3.1 Compras Públicas | 0d |
| 325 | 326 | 6.2 Servicios Generales | 0d |
| 326 | 327 | 8.5 Gestión Jurídica - Financiera | 0d |
| 327 | 328 | 15.2 BI Financiero | 0d |
| 328 | 329 | 15.3 BI Administración del Talento Humano | 0d |
| 329 | 330 | 15.4 BI Compras Públicas | 0d |
| 330 | 331 | 15.9 Tablero de Control | 0d |
| 331 | 332 | Revisar los resultados de las pruebas y necesidades de cambios | 0d |
| 332 | 333 | Planificar Salida a Producción y Soporte | 0d |
| 333 | 334 | Definir Plan de Salida a Producción | 0d |
| 334 | 335 | Planificar Estrategia de Soporte | 0d |
| 335 | 336 | Planificar Administración del Sistema | 0d |
| 336 | 337 | Revisar la ETAPA del Proyecto | 0d |
| 337 | 338 | HITO: FINALIZACION ETAPA 3 | 0d |
| 338 | 339 | ETAPA 4: Preparación Final previo Despliegue en Producción - Módulos PRI | 0d |
| 339 | 340 | Gestión General del Proyecto | 0d |
| 340 | 341 | Confirmar el Plan de Entrenamiento | 0d |
| 341 | 342 | Finalizar plan de Salida a Producción | 0d |
| 342 | 343 | Entrenamiento | 0d |
| 343 | 344 | Entrenamiento de Usuarios Funcionales y Certificación de Procesos | 0d |
| 344 | 345 | 3.1 Compras Públicas | 0d |
| 345 | 346 | 6.2 Servicios Generales | 0d |
| 346 | 347 | 8.5 Gestión Jurídica - Financiera | 0d |
| 347 | 348 | 15.2 BI Financiero | 0d |
| 348 | 349 | 15.3 BI Administración del Talento Humano | 0d |
| 349 | 350 | 15.4 BI Compras Públicas | 0d |
| 350 | 351 | 15.9 Tablero de Control | 0d |

| ID | WBS | Task | Duration |
| --- | --- | --- | --- |
| 351 | 352 | Entrenamiento de Usuario Técnicos | 0d |
| 352 | 353 | Preparación del Sistema | 0d |
| 353 | 354 | Completar la Administración del Sistema | 0d |
| 354 | 355 | Comprobación de la Puesta a Producción | 0d |
| 355 | 356 | Transición | 0d |
| 356 | 357 | Finalizar Procesamiento de Sistemas Legados | 0d |
| 357 | 358 | Realizar la Salida a Producción - Carga Inicial y Configuración Inicial | 0d |
| 358 | 359 | Revisar la ETAPA del Proyecto | 0d |
| 359 | 360 | HITO: FINALIZACION ETAPA 4 | 0d |
| 360 | 361 | ETAPA 5: Despliegue en Producción y Soporte Técnico - Módulos PRI | 0d |
| 361 | 362 | Soporte en Producción | 0d |
| 362 | 363 | Soporte durante la Salida a Producción | 0d |
| 363 | 364 | Resolver incidentes críticos | 0d |
| 364 | 365 | Entregar el soporte y Administración al cliente | 0d |
| 365 | 366 | Mejora Continua | 0d |
| 366 | 367 | Monitoreo del Sistema y Acompañamiento | 0d |
| 367 | 368 | Ajustes y Configuraciones finales al Software acorde a necesidades Entidad | 0d |
| 368 | 369 | Cierre de la FASE 3 y Proyecto | 0d |
| 369 | 370 | Reunión de Cierre de la FASE 3 y Proyecto | 0d |
| 370 | 371 | HITO: FIN DE LA FASE 3 y Proyecto | 0d |
